# NeuGantt

Schedule from MS Project, 2016-08-30 to 2016-09-29.

## Calendars

- Standard: Mon-Fri 08:00-12:00, 13:00-17:00; Sat-Sun off.

## Resources

| Resource |
| --- |
| LN |
| SS |
| Lnss |

## Schedule

| ID | WBS | Task | Duration | Start | Finish | Predecessors | Total slack | Free slack | Constraint | Resources | Work |
| --- | --- | --- | --- | --- | --- | --- | --- | --- | --- | --- | --- |
| 1 | 1 | **Vorbereitung** | 1.75d | 2016-08-30 08:00 | 2016-08-31 15:00 |  | 15d |  |  |  | 56h |
| 2 | 1.1 | **Recherche über Technologien** | 0.5d | 2016-08-30 15:00 | 2016-08-31 10:00 |  | 20.88d |  |  |  | 24h |
| 3 | 1.1.1 | UWP | 0.5d | 2016-08-30 15:00 | 2016-08-31 10:00 | 8 | 20.88d |  |  | LN; SS | 8h |
| 4 | 1.1.2 | .NET Core | 0.5d | 2016-08-30 15:00 | 2016-08-31 10:00 | 8 | 20.88d |  |  | LN; SS | 8h |
| 5 | 1.1.3 | SQLite | 0.5d | 2016-08-30 15:00 | 2016-08-31 10:00 | 8 | 20.88d |  |  | LN; SS | 8h |
| 6 | 1.2 | Recherche über KanBan | 0.25d | 2016-08-30 15:00 | 2016-08-30 17:00 | 8 | 21.12d |  |  | LN; SS | 4h |
| 7 | 1.3 | Idee | 0.25d | 2016-08-30 08:00 | 2016-08-30 10:00 |  | 20.38d | 0d |  | LN; SS | 4h |
| 8 | 1.4 | Ideensammlung | 0.5d | 2016-08-30 10:00 | 2016-08-30 15:00 | 7 | 20.38d | 0d |  | LN; SS | 8h |
| 9 | 1.5 | Besprechen der Ideen | 1d | 2016-08-30 15:00 | 2016-08-31 15:00 | 8 | 20.38d |  |  | LN; SS | 16h |
| 10 | 2 | **Meeting** | 16.25d | 2016-09-06 08:00 | 2016-09-28 10:00 |  | 0.75d |  |  |  | 16h |
| 11 | 2.1 | Meeting 0 | 1d | 2016-09-06 08:00 | 2016-09-06 17:00 |  | 16d | 0d | start no earlier than 2016-09-06 08:00 | LN; SS | 4h |
| 12 | 2.2 | Meeting 1 | 2h | 2016-09-14 08:00 | 2016-09-14 10:00 |  | 10.75d | 0.75d | start no earlier than 2016-09-14 08:00 | LN; SS | 4h |
| 13 | 2.3 | Meeting 2 | 2h | 2016-09-21 08:00 | 2016-09-21 10:00 |  | 5.75d | 0.75d | start no earlier than 2016-09-21 08:00 | LN; SS | 4h |
| 14 | 2.4 | Meeting 3 | 2h | 2016-09-28 08:00 | 2016-09-28 10:00 |  | 0.75d |  | start no earlier than 2016-09-28 08:00 | LN; SS | 4h |
| 15 | 3 | **Organisatorisches** | 21.88d | 2016-08-30 10:00 | 2016-09-29 09:00 |  | 0d |  |  |  | 43h |
| 16 | 3.1 | PSP erstellen | 1d | 2016-08-31 15:00 | 2016-09-01 15:00 | 9 | 17.98d | 0d |  | LN; SS | 16h |
| 17 | 3.2 | Beschreibung der Arbeitspakete | 0.4d | 2016-09-01 15:00 | 2016-09-02 09:12 | 16 | 17.98d | 0d |  | LN; SS | 4h |
| 18 | 3.3 | **Protokoll** | 16.12d | 2016-09-07 08:00 | 2016-09-29 09:00 |  | 0d |  |  |  | 4h |
| 19 | 3.3.1 | Protokoll 0 | 0.12d | 2016-09-07 08:00 | 2016-09-07 09:00 | 11 | 16d |  | start no earlier than 2016-09-06 08:00 | LN | 1h |
| 20 | 3.3.2 | Protokoll 1 | 1h | 2016-09-15 08:00 | 2016-09-15 09:00 | 12 | 10d |  | start no earlier than 2016-09-15 08:00 | SS | 1h |
| 21 | 3.3.3 | Protokoll 2 | 1h | 2016-09-22 08:00 | 2016-09-22 09:00 | 13 | 5d |  | start no earlier than 2016-09-22 08:00 | LN | 1h |
| 22 | 3.3.4 | Protokoll 3 | 1h | 2016-09-29 08:00 | 2016-09-29 09:00 | 14 | 0d |  | start no earlier than 2016-09-29 08:00 | SS | 1h |
| 23 | 3.4 | Projektdefinition schreiben | 0.38d | 2016-08-30 10:00 | 2016-08-30 14:00 | 7 | 21.5d |  |  | LN | 3h |
| 24 | 3.5 | Zeitplan erstellen | 1d | 2016-09-02 09:12 | 2016-09-05 09:12 | 17 | 17.98d |  |  | LN; SS | 16h |

| ID | WBS | Task | Duration | Start | Finish | Predecessors | Total slack | Free slack | Resources | Work |
| --- | --- | --- | --- | --- | --- | --- | --- | --- | --- | --- |
| 25 | 4 | **Assets** | 1d | 2016-08-31 15:00 | 2016-09-01 15:00 |  | 19.38d |  |  | 1h |
| 26 | 4.1 | Logo erstellen/besorgen | 1d | 2016-08-31 15:00 | 2016-09-01 15:00 | 9 | 19.38d |  |  | 1h |
| 27 | 5 | **Entwurf** | 0.5d | 2016-08-31 15:00 | 2016-09-01 10:00 |  | 15d |  |  | 11h |
| 28 | 5.1 | Datenmodell erstellen | 0.31d | 2016-08-31 15:00 | 2016-09-01 08:30 | 9 | 20.06d |  | LN; SS | 5h |
| 29 | 5.2 | Grobe Skizzen von UI anfertigen | 0.12d | 2016-08-31 15:00 | 2016-08-31 16:00 | 9 | 20.25d |  | LN; SS | 2h |
| 30 | 5.3 | Programmablauf beschreiben | 0.5d | 2016-08-31 15:00 | 2016-09-01 10:00 | 9 | 19.88d |  | LN | 4h |
| 31 | 6 | **Konzeption** | 2.5d? | 2016-08-30 10:00 | 2016-09-01 15:00 |  | 17d |  |  | 12h |
| 32 | 6.1 | **Skizzen erstellen** | 0.06d? | 2016-08-31 16:00 | 2016-08-31 16:30 |  | 19.19d |  |  | 5h |
| 33 | 6.1.1 | Anmeldebildschirm | 0.06d? | 2016-08-31 16:00 | 2016-08-31 16:30 | 29 | 19.19d | 0d | SS | 0.5h |
| 34 | 6.1.2 | Registrierungsbildschirm | 0.06d? | 2016-08-31 16:00 | 2016-08-31 16:30 | 29 | 19.19d | 0d | SS | 0.5h |
| 35 | 6.1.3 | Main Menu | 0.06d? | 2016-08-31 16:00 | 2016-08-31 16:30 | 29 | 19.19d | 0d | SS | 0.5h |
| 36 | 6.1.4 | Boardansicht | 0.06d? | 2016-08-31 16:00 | 2016-08-31 16:30 | 29 | 19.19d | 0d | SS | 0.5h |
| 37 | 6.1.5 | Teamverwaltungsansicht | 0.06d? | 2016-08-31 16:00 | 2016-08-31 16:30 | 29 | 19.19d | 0d | SS | 0.5h |
| 38 | 6.1.6 | Board-Einstellungen(Gruppenleiter) | 0.06d? | 2016-08-31 16:00 | 2016-08-31 16:30 | 29 | 19.19d | 0d | SS | 0.5h |
| 39 | 6.1.7 | To-Do-Ansicht | 0.06d? | 2016-08-31 16:00 | 2016-08-31 16:30 | 29 | 19.19d | 0d | SS | 0.5h |
| 40 | 6.1.8 | In-Progress-Ansicht | 0.06d? | 2016-08-31 16:00 | 2016-08-31 16:30 | 29 | 19.19d | 0d | SS | 0.5h |
| 41 | 6.1.9 | Done-Ansicht | 0.06d? | 2016-08-31 16:00 | 2016-08-31 16:30 | 29 | 19.19d | 0d | SS | 0.5h |
| 42 | 6.1.10 | Einzel Ticket-Ansicht | 0.06d | 2016-08-31 16:00 | 2016-08-31 16:30 | 29 | 19.19d | 0d | SS | 0.5h |
| 43 | 6.2 | **Standards festlegen** | 1.69d? | 2016-08-30 10:00 | 2016-08-31 16:30 |  | 20.19d |  |  | 3h |
| 44 | 6.2.1 | Codestandards | 0.06d? | 2016-08-31 15:00 | 2016-08-31 15:30 | 9 | 20.31d |  | LN; SS | 1h |
| 45 | 6.2.2 | Verwendete Technologien | 0.06d? | 2016-08-30 10:00 | 2016-08-30 10:30 | 7 | 21.81d |  | LN; SS | 1h |
| 46 | 6.2.3 | GUI Farben | 0.06d? | 2016-08-31 16:00 | 2016-08-31 16:30 | 29 | 20.19d |  | LN; SS | 1h |
| 47 | 6.3 | Backend - Routen festlegen | 0.5d? | 2016-09-01 10:00 | 2016-09-01 15:00 | 30 | 15d | 0d | LN | 4h |
| 48 | 7 | **Realisierung** | 5.19d? | 2016-08-31 16:30 | 2016-09-08 09:00 |  | 15d |  |  | 84h |
| 49 | 7.1 | **UI implementieren** | 1d? | 2016-08-31 16:30 | 2016-09-01 16:30 |  | 19.19d |  |  | 20h |
| 50 | 7.1.1 | Anmeldebildschirm | 1d? | 2016-08-31 16:30 | 2016-09-01 16:30 | 33 | 19.19d |  | SS [25%] | 2h |
| 51 | 7.1.2 | Registrierungsbildschirm | 1d? | 2016-08-31 16:30 | 2016-09-01 16:30 | 34 | 19.19d |  | SS [25%] | 2h |
| 52 | 7.1.3 | Main Menu | 1d? | 2016-08-31 16:30 | 2016-09-01 16:30 | 35 | 19.19d |  | SS [25%] | 2h |
| 53 | 7.1.4 | Boardansicht | 1d? | 2016-08-31 16:30 | 2016-09-01 16:30 | 36 | 19.19d |  | SS [25%] | 2h |
| 54 | 7.1.5 | Teamverwaltungsansicht | 1d? | 2016-08-31 16:30 | 2016-09-01 16:30 | 37 | 19.19d |  | SS [25%] | 2h |
| 55 | 7.1.6 | Board-Einstellungen(Gruppenleiter) | 1d? | 2016-08-31 16:30 | 2016-09-01 16:30 | 38 | 19.19d |  | SS [25%] | 2h |
| 56 | 7.1.7 | To-Do-Ansicht | 1d? | 2016-08-31 16:30 | 2016-09-01 16:30 | 39 | 19.19d |  | SS [25%] | 2h |
| 57 | 7.1.8 | In-Progress-Ansicht | 1d? | 2016-08-31 16:30 | 2016-09-01 16:30 | 40 | 19.19d |  | SS [25%] | 2h |
| 58 | 7.1.9 | Done-Ansicht | 1d? | 2016-08-31 16:30 | 2016-09-01 16:30 | 41 | 19.19d |  | SS [25%] | 2h |
| 59 | 7.1.10 | Einzel Ticket-Ansicht | 1d | 2016-08-31 16:30 | 2016-09-01 16:30 | 42 | 19.19d |  | SS [25%] | 2h |

| ID | WBS | Task | Duration | Start | Finish | Predecessors | Total slack | Free slack | Resources | Work |
| --- | --- | --- | --- | --- | --- | --- | --- | --- | --- | --- |
| 60 | 7.2 | **Backend implementieren** | 1.94d? | 2016-09-01 08:30 | 2016-09-02 17:00 |  | 15.69d |  |  | 14h |
| 61 | 7.2.1 | Datenbankmodell umsetzen | 0.12d? | 2016-09-01 08:30 | 2016-09-01 09:30 | 28 | 19.56d | 0d | LN | 1h |
| 62 | 7.2.2 | Entity Framework umsetzen | 0.38d? | 2016-09-01 09:30 | 2016-09-01 13:30 | 61 | 19.56d |  | LN | 3h |
| 63 | 7.2.3 | Routen implementieren | 1.25d | 2016-09-01 15:00 | 2016-09-02 17:00 | 47 | 15d | 0d | LN | 10h |
| 64 | 7.3 | Logik implementieren | 3.12d? | 2016-09-05 08:00 | 2016-09-08 09:00 | 63 | 15d |  | LN; SS | 50h |
